# ETSISOFT - 2324

How a schedule from MS Project changed from version to version. A marks actual dates.

## Version 1 (saved 2023-10-20)

| ID | WBS | Task | Duration | Start | Finish | Predecessors | Total float | Constraint |
| --- | --- | --- | --- | --- | --- | --- | --- | --- |
| 1 | 1 | **Instalación de elementos de control en puestos de líneas de producción** | 24d | 2023-11-20 | 2023-12-26 |  | 11.62d |  |
| 2 |  | Montaje de los soportes metálicos donde se apoyan las básculas | 54h | 2023-11-20 | 2023-11-28 |  | 11.62d |  |
| 3 | 1.2 | **Habilitar punto de corriente** | 7d | 2023-11-29 | 2023-12-12 |  | 15.62d |  |
| 4 |  | Instalar cables | 4d | 2023-11-29 | 2023-12-05 | 2FS+1ed | 15.62d |  |
| 5 |  | Instalar puntos de Corriente | 2d | 2023-12-05 | 2023-12-11 | 4 | 15.62d |  |
| 6 |  | Pruebas | 1d | 2023-12-11 | 2023-12-12 | 5 | 15.62d |  |
| 7 | 1.3 | **Habilitar punto de red** | 11d | 2023-11-29 | 2023-12-18 |  | 11.62d |  |
| 8 |  | Instalar canaletas | 2d | 2023-11-29 | 2023-12-01 | 2FS+1ed | 11.62d |  |
| 9 |  | instalar cables | 4d | 2023-12-01 | 2023-12-11 | 8 | 11.62d |  |
| 10 |  | Instalar tomas de red en puestos | 2d | 2023-12-11 | 2023-12-13 | 9 | 11.62d |  |
| 11 |  | Montaje de Armario de comunicaciones, acabado en armario, realización de pruebas y certificación de la red | 3d | 2023-12-13 | 2023-12-18 | 10 | 11.62d |  |
| 12 |  | Montaje de la báscula | 42h | 2023-12-18 | 2023-12-26 | 6, 11 | 11.62d | start no earlier than 2023-12-18 |
| 13 | 2 | **Instalación de tornos de acceso** | 2.25d | 2023-12-18 | 2023-12-20 |  | 14.25d |  |
| 14 | 2.1 | **Montaje de los tornos y barreras** | 1.5d | 2023-12-18 | 2023-12-20 |  | 14.25d |  |
| 15 |  | Montaje de Tornos | 1d | 2023-12-18 | 2023-12-19 | 6, 11, 2 | 14.25d | start no earlier than 2023-12-13 |
| 16 |  | Montaje de Barreras | 0.5d | 2023-12-19 | 2023-12-20 | 15 | 15.37d |  |
| 17 |  | Integración de dispositivos faciales | 1d | 2023-12-20 | 2023-12-20 | 15 | 14.62d |  |
| 18 | 3 | **Instalación de infraestructura común de red yequipamiento informático** | 2d | 2023-12-21 | 2023-12-26 |  | 11.87d |  |
| 19 |  | Instalación Servidor | 2d | 2023-12-21 | 2023-12-26 | 6, 11 | 11.87d |  |
| 20 | 4 | **Desarrollo de la aplicación informática** | 33.38d | 2023-11-20 | 2024-01-10 |  | 0d |  |
| 21 | 4.1 | **Análisis** | 12.5d | 2023-11-20 | 2023-12-07 |  | 1.75d |  |
| 22 |  | Definición del Sistema | 23.99h | 2023-11-20 | 2023-11-23 |  | 1.75d |  |
| 23 |  | Establecimiento de Requisitos | 21h | 2023-11-23 | 2023-11-27 | 22 | 4.88d | start no earlier than 2023-11-23 |
| 24 |  | Análisis de Casos de Uso | 19h | 2023-11-27 | 2023-11-30 | 22 | 2.5d | start no earlier than 2023-11-27 |
| 25 |  | Análisis de Clases | 24h | 2023-11-23 | 2023-11-28 | 22 | 4.5d |  |
| 26 |  | Identificación de las Interfaces de Usuarios | 14h | 2023-11-28 | 2023-11-30 | 22 | 2.5d |  |
| 27 |  | Análisis de la Consistencia | 16h | 2023-11-30 | 2023-12-04 | 23, 24, 25, 26 | 2.5d |  |
| 28 |  | Aprobación del Análisis | 14h | 2023-12-05 | 2023-12-07 | 27 | 1.75d | start no earlier than 2023-12-05 |
| 29 | 4.2 | **Diseño** | 7.25d | 2023-12-07 | 2023-12-19 |  | 1.75d |  |
| 30 |  | Definición de la Arquitectura del Sistema | 16h | 2023-12-07 | 2023-12-12 | 28 | 1.75d |  |
| 31 |  | Diseño de Clases | 32h | 2023-12-12 | 2023-12-18 | 30 | 1.75d |  |
| 32 |  | Diseño de los Datos | 32h | 2023-12-12 | 2023-12-18 | 30 | 1.75d |  |
| 33 |  | Verificación del Diseño | 8h | 2023-12-18 | 2023-12-19 | 31, 32 | 1.75d | start no earlier than 2023-12-18 |
| 34 | 4.3 | **Construcción** | 10d | 2023-12-20 | 2024-01-04 |  | 0d |  |
| 35 |  | Codificación de las clases | 32h | 2023-12-20 | 2023-12-26 | 33 | 1.75d |  |
| 36 |  | Integración del Sistema | 14h | 2023-12-27 | 2023-12-28 | 35 | 1.75d |  |
| 37 |  | Aprobación del Sistema | 16h | 2024-01-02 | 2024-01-04 | 36 | 0d | start no earlier than 2024-01-02 |
| 38 | 4.4 | **Pruebas** | 3.62d | 2024-01-05 | 2024-01-10 |  | 0d |  |
| 39 |  | Ejecución Pruebas Unitarias | 16h | 2024-01-05 | 2024-01-08 | 37 | 0d | start no earlier than 2024-01-05 |
| 40 |  | Ejecución de las Pruebas de Integración | 13h | 2024-01-09 | 2024-01-10 | 39 | 0d |  |
| 41 | 5 | **Instalación del Software y Prueba del Sistema** | 2d | 2024-01-10 | 2024-01-12 |  | 0d |  |
| 42 |  | Instalación y configuración APP EPSSOFT | 8h | 2024-01-10 | 2024-01-11 | 40 | 0d |  |
| 43 |  | Prueba Global del Sistema | 8h | 2024-01-11 | 2024-01-12 | 42 | 0d |  |
| 44 | 6 | **Reunión** | 27.75d | 2023-11-20 | 2024-01-02 |  | 7.87d |  |
| 46 |  | Reunión 2 | 6h | 2023-12-04 | 2023-12-04 |  | 24.87d | start no earlier than 2023-12-04 |
| 47 |  | Reunión 3 | 6h | 2023-12-18 | 2023-12-18 |  | 16.87d | start no earlier than 2023-12-18 |
| 48 |  | Reunión 4 | 6h | 2024-01-02 | 2024-01-02 |  | 7.87d | start no earlier than 2024-01-01 |

## Version 2 (saved 2023-10-20)

Last finish stays 2024-01-12.

Changed:

| ID | Task | Other |
| --- | --- | --- |
| 15 | Montaje de Tornos | resources Trabajador Soporte1; Trabajador Soporte2; Torno [200%] → Trabajador Soporte1; Trabajador Soporte2; Torno [300%] |
| 17 | Integración de dispositivos faciales | resources Sara Carbonero; Dispositivos Biometricos [400%] → Sara Carbonero; Dispositivos Biometricos [600%] |

## Version 3 (saved 2023-10-20)

Last finish stays 2024-01-12.

Added:

| ID | Task | Duration | Start | Finish | Constraint | Resources |
| --- | --- | --- | --- | --- | --- | --- |
| 45 | Reunión 1 | 6h | 2023-11-20 | 2023-11-20 | start no earlier than 2023-11-20 | Javier Gutierrez; Juan Pérez; Francisco Delgado; Sara Carbonero; Vicente Ruiz |
