# ETSISOFT - 2324

How a schedule from MS Project changed from version to version. A marks actual dates.

## Version 1 (saved 2023-10-20)

| ID | WBS | Task | Duration | Start | Finish | Predecessors | Total float | Constraint |
| --- | --- | --- | --- | --- | --- | --- | --- | --- |
| 1 | 1 | **Instalación de elementos de control en puestos de líneas de producción** | 27d | 2023-11-20 | 2023-12-29 |  | 16.46d |  |
| 2 |  | Montaje de los soportes metálicos donde se apoyan las básculas | 60h | 2023-11-20 | 2023-11-29 |  | 16.46d |  |
| 3 | 1.2 | **Habilitar punto de corriente** | 7d | 2023-11-30 | 2023-12-13 |  | 20.46d |  |
| 4 |  | Instalar cables | 4d | 2023-11-30 | 2023-12-07 | 2FS+1ed | 20.46d |  |
| 5 |  | Instalar puntos de Corriente | 2d | 2023-12-07 | 2023-12-12 | 4 | 20.46d |  |
| 6 |  | Pruebas | 1d | 2023-12-12 | 2023-12-13 | 5 | 20.46d |  |
| 7 | 1.3 | **Habilitar punto de red** | 11d | 2023-11-30 | 2023-12-19 |  | 16.46d |  |
| 8 |  | Instalar canaletas | 2d | 2023-11-30 | 2023-12-04 | 2FS+1ed | 16.46d |  |
| 9 |  | instalar cables | 4d | 2023-12-04 | 2023-12-12 | 8 | 16.46d |  |
| 10 |  | Instalar tomas de red en puestos | 2d | 2023-12-12 | 2023-12-14 | 9 | 16.46d |  |
| 11 |  | Montaje de Armario de comunicaciones, acabado en armario, realización de pruebas y certificación de la red | 3d | 2023-12-14 | 2023-12-19 | 10 | 16.46d |  |
| 12 |  | Montaje de la báscula | 60h | 2023-12-19 | 2023-12-29 | 6, 11 | 16.46d | start no earlier than 2023-12-19 |
| 13 | 2 | **Instalación de tornos de acceso** | 4.5d | 2023-12-19 | 2023-12-26 |  | 19.46d |  |
| 14 | 2.1 | **Montaje de los tornos y barreras** | 1.5d | 2023-12-19 | 2023-12-20 |  | 19.96d |  |
| 15 |  | Montaje de Tornos | 1d | 2023-12-19 | 2023-12-20 | 6, 11, 2 | 19.96d | start no earlier than 2023-12-13 |
| 16 |  | Montaje de Barreras | 0.5d | 2023-12-20 | 2023-12-20 | 15 | 22.46d |  |
| 17 |  | Integración de dispositivos faciales | 1d | 2023-12-21 | 2023-12-26 | 15 | 19.46d | start no earlier than 2023-12-21 |
| 18 | 3 | **Instalación de infraestructura común de red yequipamiento informático** | 5.75d | 2023-12-19 | 2023-12-28 |  | 18.21d |  |
| 19 |  | Instalación Servidor | 2.5d | 2023-12-19 | 2023-12-28 | 6, 11 | 18.21d |  |
| 20 | 4 | **Desarrollo de la aplicación informática** | 40.88d | 2023-11-20 | 2024-01-22 |  | 0d |  |
| 21 | 4.1 | **Análisis** | 14d | 2023-11-20 | 2023-12-12 |  | 0d |  |
| 22 |  | Definición del Sistema | 31.33h | 2023-11-20 | 2023-11-24 |  | 0.83d |  |
| 23 |  | Establecimiento de Requisitos | 21h | 2023-11-24 | 2023-11-28 | 22 | 3.46d | start no earlier than 2023-11-23 |
| 24 |  | Análisis de Casos de Uso | 19h | 2023-11-28 | 2023-12-01 | 22 | 1.08d | start no earlier than 2023-11-28 |
| 25 |  | Análisis de Clases | 26h | 2023-11-24 | 2023-11-29 | 22 | 2.83d |  |
| 26 |  | Identificación de las Interfaces de Usuarios | 14h | 2023-11-29 | 2023-12-01 | 22 | 1.08d |  |
| 27 |  | Análisis de la Consistencia | 18h | 2023-12-04 | 2023-12-07 | 23, 24, 25, 26 | 0d | start no earlier than 2023-12-04 |
| 28 |  | Aprobación del Análisis | 14h | 2023-12-07 | 2023-12-12 | 27 | 0d | start no earlier than 2023-12-07 |
| 29 | 4.2 | **Diseño** | 14d | 2023-12-12 | 2024-01-03 |  | 0d |  |
| 30 |  | Definición de la Arquitectura del Sistema | 16h | 2023-12-12 | 2023-12-14 | 28 | 0d |  |
| 31 |  | Diseño de Clases | 48h | 2023-12-14 | 2023-12-22 | 30 | 0d | start no earlier than 2023-12-14 |
| 32 |  | Diseño de los Datos | 32h | 2023-12-19 | 2023-12-22 | 30 | 0d | start no earlier than 2023-12-19 |
| 33 |  | Verificación del Diseño | 24h | 2023-12-26 | 2024-01-03 | 31, 32 | 0d | start no earlier than 2023-12-26 |
| 34 | 4.3 | **Construcción** | 8.88d | 2024-01-03 | 2024-01-16 |  | 0d |  |
| 35 |  | Codificación de las clases | 36h | 2024-01-03 | 2024-01-09 | 33 | 0d |  |
| 36 |  | Integración del Sistema | 14h | 2024-01-09 | 2024-01-11 | 35 | 0d |  |
| 37 |  | Aprobación del Sistema | 18h | 2024-01-11 | 2024-01-16 | 36 | 0d | start no earlier than 2024-01-02 |
| 38 | 4.4 | **Pruebas** | 4d | 2024-01-16 | 2024-01-22 |  | 0d |  |
| 39 |  | Ejecución Pruebas Unitarias | 19h | 2024-01-16 | 2024-01-18 | 37 | 0d | start no earlier than 2024-01-05 |
| 40 |  | Ejecución de las Pruebas de Integración | 13h | 2024-01-18 | 2024-01-22 | 39 | 0d |  |
| 41 | 5 | **Instalación del Software y Prueba del Sistema** | 2.33d | 2024-01-22 | 2024-01-24 |  | 0d |  |
| 42 |  | Instalación y configuración APP EPSSOFT | 8.67h | 2024-01-22 | 2024-01-23 | 40 | 0d |  |
| 43 |  | Prueba Global del Sistema | 10h | 2024-01-23 | 2024-01-24 | 42 | 0d |  |
| 44 | 6 | **Reunión** | 27.75d | 2023-11-20 | 2024-01-02 |  | 15.71d |  |
| 45 |  | Reunión 1 | 6h | 2023-11-20 | 2023-11-20 |  | 42.71d | start no earlier than 2023-11-20 |
| 46 |  | Reunión 2 | 6h | 2023-12-04 | 2023-12-04 |  | 32.71d | start no earlier than 2023-12-04 |
| 47 |  | Reunión 3 | 6h | 2023-12-18 | 2023-12-18 |  | 24.71d | start no earlier than 2023-12-18 |
| 48 |  | Reunión 4 | 6h | 2024-01-02 | 2024-01-02 |  | 15.71d | start no earlier than 2024-01-01 |

## Version 2 (saved 2023-10-20)

Last finish stays 2024-01-24.

Changed:

| ID | Task | Other |
| --- | --- | --- |
| 15 | Montaje de Tornos | resources Trabajador Soporte1; Trabajador Soporte2; Torno [200%] → Trabajador Soporte1; Trabajador Soporte2; Torno [300%] |
| 17 | Integración de dispositivos faciales | resources Sara Carbonero; Dispositivos Biometricos [400%] → Sara Carbonero; Dispositivos Biometricos [600%] |
